# 一研为定-时间规划 - 副本

Schedule from MS Project, 2020-03-19 to 2020-05-13, costs in ¥, A marks actual dates.

## Calendars

- 标准: Mon-Fri 08:00-12:00, 13:00-17:00; Sat-Sun off.

## Resources

| Resource |
| --- |
| 产品经理 |
| UI专家 |
| 测试员1 |
| 测试员2 |
| 程序员1 |
| 程序员2 |
| 程序员3 |
| 程序员4 |
| 程序员5 |
| 设计专家 |
| 项目经理 |
| 需求专家 |
| 质量专家 |

## Schedule

| ID | WBS | Task | Type | Duration | Start | Finish | Predecessors | Complete | Actual start | Actual finish | Constraint | Resources | Work | Actual work | Cost | Actual cost |
| --- | --- | --- | --- | --- | --- | --- | --- | --- | --- | --- | --- | --- | --- | --- | --- | --- |
| 1 | 1 | **启动** |  | 6d | 2020-03-19 A | 2020-03-26 |  | 100% |  | 2020-03-23 |  |  | 184h | 184h | 10,280 | 10,280 |
| 2 | 1.1 | 任命项目经理 | manual | 1d | 2020-03-19 A | 2020-03-19 A |  | 100% |  |  | as late as possible | 产品经理 | 8h | 8h | 560 | 560 |
| 3 | 1.2 | 组建核心团队 | manual | 1d | 2020-03-19 A | 2020-03-19 A |  | 100% |  |  | as late as possible | UI专家; 测试员1; 测试员2; 产品经理; 程序员1; 程序员2; 程序员3; 程序员4; 程序员5; 设计专家; 项目经理; 需求专家; 质量专家 | 104h | 104h | 4,760 | 4,760 |
| 4 | 1.3 | 制定里程碑计划 | manual | 1d | 2020-03-19 A | 2020-03-19 A |  | 100% |  |  | as late as possible | 产品经理; 项目经理 | 16h | 16h | 1,120 | 1,120 |
| 5 | 1.4 | 分析干系人 | manual | 1d | 2020-03-19 A | 2020-03-19 A |  | 100% |  |  | as late as possible | 产品经理; 项目经理 | 16h | 16h | 1,120 | 1,120 |
| 6 | 1.5 | 制定项目章程 | manual | 1d | 2020-03-20 A | 2020-03-20 A | 2, 3, 4, 5 | 100% |  |  | as late as possible | 产品经理; 项目经理 | 16h | 16h | 1,120 | 1,120 |
| 7 | 1.6 | 项目启动大会 | manual | 1d | 2020-03-23 A | 2020-03-23 A | 6 | 100% |  |  | as late as possible | 产品经理; 项目经理; 需求专家 | 24h | 24h | 1,600 | 1,600 |
| 8 | 2 | **规划** |  | 15d | 2020-03-24 A | 2020-04-13 A |  | 100% |  |  |  |  | 184h | 184h | 12,080 | 12,080 |
| 9 | 2.1 | **规划范围** |  | 4d | 2020-03-24 A | 2020-03-27 A |  | 100% |  |  |  |  | 56h | 56h | 3,440 | 3,440 |
| 10 | 2.1.1 | 制定需求说明书 | manual | 1d | 2020-03-24 A | 2020-03-24 A | 7 | 100% |  |  | as late as possible | 需求专家 | 8h | 8h | 480 | 480 |
| 11 | 2.1.2 | 界面设计 | manual | 1d | 2020-03-25 A | 2020-03-25 A | 10 | 100% |  |  | as late as possible | UI专家; 设计专家 | 16h | 16h | 880 | 880 |
| 12 | 2.1.3 | 详细设计说明书 | manual | 1d | 2020-03-25 A | 2020-03-25 A | 10 | 100% |  |  | as late as possible | 设计专家 | 8h | 8h | 400 | 400 |
| 13 | 2.1.4 | 范围说明书 | manual | 1d | 2020-03-25 A | 2020-03-25 A | 10 | 100% |  |  | as late as possible | 项目经理 | 8h | 8h | 560 | 560 |
| 14 | 2.1.5 | 创建WBS | manual | 1d | 2020-03-26 A | 2020-03-26 A | 11, 12, 13 | 100% |  |  | as late as possible | 项目经理 | 8h | 8h | 560 | 560 |
| 15 | 2.1.6 | 形成范围基准 | manual | 1d | 2020-03-27 A | 2020-03-27 A | 14 | 100% |  |  | as late as possible | 项目经理 | 8h | 8h | 560 | 560 |
| 16 | 2.2 | **规划时间** |  | 5d | 2020-03-28 | 2020-04-02 A |  | 100% | 2020-03-30 |  |  |  | 40h | 40h | 2,800 | 2,800 |
| 17 | 2.2.1 | 排列工作包顺序 | manual | 1d | 2020-03-30 A | 2020-03-31 | 15 | 100% |  | 2020-03-30 |  | 项目经理 | 8h | 8h | 560 | 560 |
| 18 | 2.2.2 | 估算资源 | manual | 1d | 2020-03-30 A | 2020-03-30 A | 17 | 100% |  |  | as late as possible | 项目经理 | 8h | 8h | 560 | 560 |
| 19 | 2.2.3 | 估算持续时间 | manual | 1d | 2020-03-31 A | 2020-03-31 A | 18 | 100% |  |  | as late as possible | 项目经理 | 8h | 8h | 560 | 560 |
| 20 | 2.2.4 | 制定进度计划 | manual | 1d | 2020-04-01 A | 2020-04-01 A | 19 | 100% |  |  | as late as possible | 项目经理 | 8h | 8h | 560 | 560 |
| 21 | 2.2.5 | 形成进度基准 | manual | 1d | 2020-04-02 A | 2020-04-02 A | 20 | 100% |  |  |  | 项目经理 | 8h | 8h | 560 | 560 |
| 22 | 2.3 | **规划成本** |  | 3d | 2020-04-03 A | 2020-04-07 A |  | 100% |  |  |  |  | 16h | 16h | 1,120 | 1,120 |
| 23 | 2.3.1 | 项目成本估算 | milestone, manual | 0d | 2020-04-03 A | 2020-04-03 A | 21 | 100% |  |  | as late as possible | 项目经理 |  |  |  |  |
| 24 | 2.3.2 | 项目预算 | manual | 1d | 2020-04-06 A | 2020-04-06 A | 23 | 100% |  |  | as late as possible | 项目经理 | 8h | 8h | 560 | 560 |
| 25 | 2.3.3 | 形成范围基准 | manual | 1d | 2020-04-07 A | 2020-04-07 A | 24 | 100% |  |  |  | 项目经理 | 8h | 8h | 560 | 560 |

| ID | WBS | Task | Type | Duration | Start | Finish | Predecessors | Complete | Remaining | Actual finish | Constraint | Resources | Work | Actual work | Cost | Actual cost |
| --- | --- | --- | --- | --- | --- | --- | --- | --- | --- | --- | --- | --- | --- | --- | --- | --- |
| 26 | 2.4 | **规划质量** |  | 2d | 2020-03-30 A | 2020-03-31 A |  | 100% |  |  |  |  | 16h | 16h | 800 | 800 |
| 27 | 2.4.1 | 制定测试计划 | manual | 1d | 2020-03-30 A | 2020-03-30 A | 15 | 100% |  |  | as late as possible | 质量专家 | 8h | 8h | 400 | 400 |
| 28 | 2.4.2 | 制定测试用例 | manual | 1d | 2020-03-31 A | 2020-03-31 A | 27 | 100% |  |  | as late as possible | 质量专家 | 8h | 8h | 400 | 400 |
| 29 | 2.5 | **规划人力资源** |  | 2d | 2020-03-31 A | 2020-04-01 A |  | 100% |  |  |  |  | 16h | 16h | 1,120 | 1,120 |
| 30 | 2.5.1 | 制定人力资源计划 | manual | 1d | 2020-03-31 A | 2020-03-31 A | 18 | 100% |  |  | as late as possible | 项目经理 | 8h | 8h | 560 | 560 |
| 31 | 2.5.2 | 制定人员配备管理计划 | manual | 1d | 2020-04-01 A | 2020-04-01 A | 30 | 100% |  |  | as late as possible | 项目经理 | 8h | 8h | 560 | 560 |
| 32 | 2.6 | **规划沟通** |  | 1d | 2020-04-02 A | 2020-04-02 A |  | 100% |  |  |  |  | 8h | 8h | 560 | 560 |
| 33 | 2.6.1 | 制定沟通管理计划 | manual | 1d | 2020-04-02 A | 2020-04-02 A | 31 | 100% |  |  | as late as possible | 项目经理 | 8h | 8h | 560 | 560 |
| 34 | 2.7 | **规划风险** |  | 4d | 2020-04-08 A | 2020-04-13 |  | 100% |  | 2020-04-10 |  |  | 24h | 24h | 1,680 | 1,680 |
| 35 | 2.7.1 | 识别风险 | manual | 1d | 2020-04-08 A | 2020-04-08 A | 16, 22, 26, 29 | 100% |  |  | as late as possible | 项目经理 | 8h | 8h | 560 | 560 |
| 36 | 2.7.2 | 风险分析 | manual | 1d | 2020-04-09 A | 2020-04-09 A | 35 | 100% |  |  | as late as possible | 项目经理 | 8h | 8h | 560 | 560 |
| 37 | 2.7.3 | 制定风险登记册 | manual | 1d | 2020-04-10 A | 2020-04-10 A | 36 | 100% |  |  | as late as possible | 项目经理 | 8h | 8h | 560 | 560 |
| 38 | 2.8 | 规划整合 | manual | 1d | 2020-04-13 A | 2020-04-13 A | 37 | 100% |  |  | as late as possible | 项目经理 | 8h | 8h | 560 | 560 |
| 39 | 3 | **执行与监控** |  | 18.75d | 2020-04-14 A | 2020-05-08 |  | 77% | 4.37d |  |  |  | 748h | 362h | 34,160 | 15,610 |
| 40 | 3.1 | 组建项目团队 | manual | 1d | 2020-04-14 A | 2020-04-14 A | 8 | 100% |  |  | as late as possible | UI专家; 测试员1; 测试员2; 产品经理; 程序员1; 程序员2; 程序员3; 程序员4; 程序员5; 设计专家; 项目经理; 需求专家; 质量专家 | 104h | 104h | 4,760 | 4,760 |
| 41 | 3.2 | **项目执行** |  | 6d | 2020-04-15 A | 2020-04-22 |  | 99% | 0d |  |  |  | 136h | 128h | 4,760 | 4,480 |
| 42 | 3.2.1 | **用户模块** |  | 6d | 2020-04-15 A | 2020-04-22 A |  | 100% |  |  |  |  | 104h | 104h | 3,640 | 3,640 |
| 43 | 3.2.1.1 | 注册登录 | manual | 1d | 2020-04-15 A | 2020-04-15 A | 40 | 100% |  |  | as late as possible | 程序员1 | 8h | 8h | 280 | 280 |
| 44 | 3.2.1.2 | 院校专业查询 | manual | 1d | 2020-04-16 A | 2020-04-16 A | 43 | 100% |  |  | as late as possible | 程序员2 | 8h | 8h | 280 | 280 |
| 45 | 3.2.1.3 | 每日打卡 | manual | 1d | 2020-04-17 A | 2020-04-17 A | 43 | 100% |  |  | as late as possible | 程序员3 | 8h | 8h | 280 | 280 |
| 46 | 3.2.1.4 | 考研自习室 | manual | 1d | 2020-04-17 A | 2020-04-17 A | 43 | 100% |  |  | as late as possible | 程序员3 | 8h | 8h | 280 | 280 |
| 47 | 3.2.1.5 | 考研资料库 | manual | 1d | 2020-04-20 A | 2020-04-20 A | 46 | 100% |  |  | as late as possible | 程序员4 | 8h | 8h | 280 | 280 |
| 48 | 3.2.1.6 | 用户答疑 | manual | 1d | 2020-04-20 A | 2020-04-20 A | 46 | 100% |  |  | as late as possible | 程序员4 | 8h | 8h | 280 | 280 |
| 49 | 3.2.1.7 | 网课学习 | manual | 1d | 2020-04-20 A | 2020-04-20 A | 46 | 100% |  |  | as late as possible | 程序员4 | 8h | 8h | 280 | 280 |
| 50 | 3.2.1.8 | 社区文章 | manual | 1d | 2020-04-21 A | 2020-04-21 A | 43 | 100% |  |  | as late as possible | 程序员5 | 8h | 8h | 280 | 280 |
| 51 | 3.2.1.9 | 社区问答 | manual | 1d | 2020-04-21 A | 2020-04-21 A | 43 | 100% |  |  | as late as possible | 程序员5 | 8h | 8h | 280 | 280 |
| 52 | 3.2.1.10 | 添加文章问答 | manual | 1d | 2020-04-21 A | 2020-04-21 A | 50, 51 | 100% |  |  |  | 程序员5 | 8h | 8h | 280 | 280 |
| 53 | 3.2.1.11 | 文章问答回复 | manual | 1d | 2020-04-21 A | 2020-04-21 A | 50, 51 | 100% |  |  | as late as possible | 程序员5 | 8h | 8h | 280 | 280 |
| 54 | 3.2.1.12 | 个人中心信息 | manual | 1d | 2020-04-22 A | 2020-04-22 A | 53 | 100% |  |  | as late as possible | 程序员1 | 8h | 8h | 280 | 280 |
| 55 | 3.2.1.13 | 个人数据 | manual | 1d | 2020-04-22 A | 2020-04-22 A | 54 | 100% |  |  | as late as possible | 程序员1 | 8h | 8h | 280 | 280 |

| ID | WBS | Task | Type | Duration | Start | Finish | Predecessors | Complete | Remaining | Constraint | Resources | Work | Actual work | Cost | Actual cost |
| --- | --- | --- | --- | --- | --- | --- | --- | --- | --- | --- | --- | --- | --- | --- | --- |
| 56 | 3.2.2 | **管理员模块** |  | 2d | 2020-04-15 A | 2020-04-16 |  | 99% | 0d |  |  | 32h | 24h | 1,120 | 840 |
| 57 | 3.2.2.1 | 数据分析 | manual | 1.5d | 2020-04-15 A | 2020-04-16 | 40 | 99% | 0d | as late as possible | 程序员1 | 16h | 12h | 560 | 420 |
| 58 | 3.2.2.2 | 信息资料收集 | manual | 1.5d | 2020-04-15 A | 2020-04-16 | 40 | 99% | 0d | as late as possible | 程序员1 | 16h | 12h | 560 | 420 |
| 59 | 3.3 | **项目监控** |  | 4.75d | 2020-04-23 A | 2020-04-29 |  | 25% | 3.56d |  |  | 160h | 40h | 8,040 | 2,010 |
| 60 | 3.3.1 | 各项指标监控 | manual | 1d | 2020-04-23 A | 2020-04-23 | 40 | 25% | 0.75d |  | 测试员1; 产品经理; 项目经理 | 24h | 6h | 1,360 | 340 |
| 61 | 3.3.2 | 监控评审 | manual | 1d | 2020-04-24 A | 2020-04-24 | 60 | 25% | 0.75d |  | 设计专家; 项目经理 | 16h | 4h | 960 | 240 |
| 62 | 3.3.3 | 变更评审 | manual | 1d | 2020-04-27 A | 2020-04-27 | 61 | 25% | 0.75d |  | 设计专家; 项目经理 | 16h | 4h | 960 | 240 |
| 63 | 3.3.4 | 例会 | manual | 1d | 2020-04-28 A | 2020-04-28 | 40 | 25% | 0.75d | as late as possible | UI专家; 测试员1; 测试员2; 产品经理; 程序员1; 程序员2; 程序员3; 程序员4; 程序员5; 设计专家; 项目经理; 需求专家; 质量专家 | 104h | 26h | 4,760 | 1,190 |
| 64 | 3.4 | **管理干系人** |  | 3d | 2020-04-29 A | 2020-05-01 |  | 99% | 0d |  |  | 12h | 6h | 840 | 420 |
| 65 | 3.4.1 | 发布项目信息 |  | 0.25d | 2020-04-29 A | 2020-04-29 A | 40 | 100% |  |  | 项目经理 | 2h | 2h | 140 | 140 |
| 66 | 3.4.2 | 报告监控指标 |  | 0.25d | 2020-04-30 A | 2020-04-30 A | 40 | 100% |  |  | 项目经理 | 2h | 2h | 140 | 140 |
| 67 | 3.4.3 | 干系人沟通 | manual | 0.25d | 2020-05-01 A | 2020-05-01 | 40 | 99% | 0d | as late as possible | 项目经理 | 8h | 2h | 560 | 140 |
| 68 | 3.5 | **团队建设** |  | 4d | 2020-05-04 A | 2020-05-07 |  | 25% | 3d |  |  | 288h | 72h | 12,880 | 3,220 |
| 69 | 3.5.1 | 培训 | manual | 1d | 2020-05-04 A | 2020-05-04 | 40 | 25% | 0.75d |  | UI专家; 测试员1; 测试员2; 程序员1; 程序员2; 程序员3; 程序员4; 程序员5; 设计专家; 需求专家; 质量专家 | 88h | 22h | 3,640 | 910 |
| 70 | 3.5.2 | 娱乐活动 | manual | 1d | 2020-05-05 A | 2020-05-05 | 40 | 25% | 0.75d |  | UI专家; 测试员1; 测试员2; 产品经理; 程序员1; 程序员2; 程序员3; 程序员5; 设计专家; 项目经理; 需求专家; 质量专家 | 96h | 24h | 4,480 | 1,120 |
| 71 | 3.5.3 | 沟通 | manual | 1d | 2020-05-06 A | 2020-05-06 | 40 | 25% | 0.75d |  | UI专家; 测试员1; 测试员2; 产品经理; 程序员1; 程序员2; 程序员3; 程序员4; 程序员5; 设计专家; 项目经理; 需求专家; 质量专家 | 104h | 26h | 4,760 | 1,190 |
| 72 | 3.6 | 项目验收 | manual | 1d | 2020-05-07 A | 2020-05-07 | 41 | 25% | 0.75d |  | UI专家; 产品经理; 设计专家; 项目经理; 需求专家; 质量专家 | 48h | 12h | 2,880 | 720 |
| 73 | 4 | **收尾** |  | 2.75d | 2020-05-11 A | 2020-05-13 |  | 25% | 2.06d |  |  | 104h | 26h | 6,000 | 1,500 |
| 74 | 4.1 | 项目终检 | manual | 1d | 2020-05-11 A | 2020-05-11 | 72 | 25% | 0.75d |  | UI专家; 产品经理; 设计专家; 项目经理; 需求专家; 质量专家 | 48h | 12h | 2,880 | 720 |
| 75 | 4.2 | 项目内部收尾 | manual | 1d | 2020-05-12 A | 2020-05-12 | 72 | 25% | 0.75d | as late as possible | UI专家; 测试员1; 产品经理; 设计专家; 项目经理; 需求专家; 质量专家 | 56h | 14h | 3,120 | 780 |
